# Plan de proyecto modelo2

Schedule from MS Project, 2010-04-07 to 2011-03-19, costs in $, A marks actual dates.
APG Consulting

## Calendars

- Estándar: Mon-Fri 19:00-21:00; Sat-Sun 14:00-18:00. Exceptions (off unless hours are given): 2010-04-05 to 2010-04-09 08:00-12:00, 13:00-17:00, 2010-04-10 to 2010-04-11, 2010-04-12 to 2010-04-16 08:00-12:00, 13:00-17:00, 2010-04-17 to 2010-04-18, 2010-04-19 to 2010-04-23 08:00-12:00, 13:00-17:00, 2010-04-24 to 2010-04-25, 2010-04-26 to 2010-04-30 08:00-12:00, 13:00-17:00, 2010-05-01 to 2010-05-02, 2010-05-03 to 2010-05-07 08:00-12:00, 13:00-17:00, 2010-05-08 to 2010-05-09, 2010-05-10 to 2010-05-14 08:00-12:00, 13:00-17:00, 2010-05-15 to 2010-05-16, 2010-05-17 to 2010-05-21 08:00-12:00, 13:00-17:00, 2010-05-22 to 2010-05-23, 2010-05-24 to 2010-05-28 08:00-12:00, 13:00-17:00, 2010-05-29 to 2010-05-30, 2010-05-31 to 2010-06-04 08:00-12:00, 13:00-17:00, 2010-06-05 to 2010-06-06, 2010-06-07 to 2010-06-11 08:00-12:00, 13:00-17:00, 2010-06-12 to 2010-06-13, 2010-06-14 to 2010-06-18 08:00-12:00, 13:00-17:00, 2010-06-19 to 2010-06-21, 2010-06-22 to 2010-06-25 08:00-12:00, 13:00-17:00, 2010-06-26 to 2010-06-27, 2010-06-28 to 2010-07-02 08:00-12:00, 13:00-17:00, 2010-07-03 to 2010-07-04, 2010-07-05 to 2010-07-08 08:00-12:00, 13:00-17:00, 2010-07-09 to 2010-07-11, 2010-07-12 to 2010-07-16 08:00-12:00, 13:00-17:00, 2010-07-17 to 2010-07-18, 2010-07-19 to 2010-07-23 08:00-12:00, 13:00-17:00, 2010-07-24 to 2010-07-25, 2010-07-26 to 2010-07-30 08:00-12:00, 13:00-17:00, 2010-07-31 to 2010-08-01, 2010-08-02 to 2010-08-06 08:00-12:00, 13:00-17:00, 2010-08-07 to 2010-08-08, 2010-08-09 to 2010-08-13 08:00-12:00, 13:00-17:00, 2010-08-14 to 2010-08-16, 2010-08-17 to 2010-08-20 08:00-12:00, 13:00-17:00, 2010-08-21 to 2010-08-22, 2010-08-23 to 2010-08-27 08:00-12:00, 13:00-17:00, 2010-08-28 to 2010-08-29, 2010-08-30 to 2010-08-31 08:00-12:00, 13:00-17:00, 2010-09-09 to 2010-09-10, 2010-10-11, 2010-12-08.

## Resources

| Resource | Rate |
| --- | --- |
| Líder de Proyecto | 40 |
| Analista Funcional | 25 |
| Arquitecto | 25 |
| Desarrollador | 25 |
| Tester | 25 |
| Soporte | 25 |

## Schedule

| ID | WBS | Task | Type | Duration | Start | Finish | Predecessors | Complete | Remaining | Baseline start | Baseline finish | Baseline duration | Total slack | Free slack | Resources | Work | Actual work | Cost | Actual cost |
| --- | --- | --- | --- | --- | --- | --- | --- | --- | --- | --- | --- | --- | --- | --- | --- | --- | --- | --- | --- |
| 1 | 1 | **Proyecto Nuevo** |  | 164.87d? | 2010-04-07 A | 2011-03-19 |  | 2% | 161.97d? | 2009-02-25 | 2009-04-16 | 32d? | 0d |  |  | 2569.28h | 47.2h | 66,223.56 | 1,232.5 |
| 2 | 1.1 | **Inicio / Visión** |  | 16d? | 2010-04-07 A | 2010-04-29 |  | 28% | 11.53d? | 2009-02-25 | 2009-03-11 | 10d? | 148.87d |  |  | 122.8h | 47.2h | 3,680.5 | 1,232.5 |
| 3 | 1.1.1 | Generación de Brief de Proyecto |  | 1.88d | 2010-04-07 A | 2010-04-08 A |  | 100% |  | 2009-02-25 | 2009-02-26 | 1d? |  |  | Analista Funcional [50%]; Líder de Proyecto [10%] | 9h | 9h | 247.5 | 247.5 |
| 4 | 1.1.2 | Definición de Roles y Recursos |  | 2.5d | 2010-04-07 A | 2010-04-09 |  | 80% | 0.5d | 2009-02-26 | 2009-03-05 | 5d | 10.67d | 0d | Analista Funcional [20%] | 4h | 3.2h | 100 | 80 |
| 5 | 1.1.3 | Definición de Plan de Comunicación |  | 1d | 2010-04-07 A | 2010-04-08 A |  | 100% |  |  |  |  |  |  | Arquitecto [50%] | 8h | 8h | 200 | 200 |
| 6 | 1.1.4 | Definición de CM |  | 1d | 2010-04-09 | 2010-04-09 | 3, 5 |  |  |  |  |  | 161.99d | 13.12d | Líder de Proyecto [50%] | 4h |  | 160 |  |
| 7 | 1.1.5 | Definición de Tecnología a utilizar |  | 2d | 2010-04-09 | 2010-04-12 | 3 |  |  | 2009-02-26 | 2009-03-05 | 5d | 160.99d | 12.12d | Arquitecto [50%] | 8h |  | 200 |  |
| 8 | 1.1.6 | Definición de Plan de Proyecto |  | 2d | 2010-04-09 | 2010-04-12 | 3 |  |  |  |  |  | 160.99d | 12.12d | Líder de Proyecto [50%] | 8h |  | 320 |  |
| 9 | 1.1.7 | Definición de Plan de Calidad |  | 2d? | 2010-04-09 | 2010-04-13 | 4 |  |  |  |  |  | 160.37d |  | Analista Funcional [50%] | 8h |  | 200 |  |
| 10 | 1.1.8 | Estimación de Esfuerzo |  | 4d | 2010-04-13 A | 2010-04-19 | 3, 4 | 63% | 1.5d | 2009-03-05 | 2009-03-10 | 3d | 148.87d | 0d | Líder de Proyecto [10%]; Arquitecto [50%]; Desarrollador [50%] | 37.8h | 27h | 993 | 705 |
| 11 | 1.1.9 | Armado de Cronograma |  | 10d | 2010-04-15 | 2010-04-29 | 10FS-2d |  |  |  |  |  | 148.87d | 0d | Líder de Proyecto [30%]; Analista Funcional [15%] | 36h |  | 1,260 |  |
| 12 | 1.1.10 | Presentación de Documentación de Proyecto(E1) | milestone | 0d | 2010-04-29 | 2010-04-29 | 3, 4, 5, 7, 10, 11, 6, 8 |  |  | 2009-03-10 | 2009-03-11 | 1d | 148.87d |  | Líder de Proyecto; Arquitecto |  |  |  |  |
| 13 | 1.2 | **Elaboración** |  | 53.81d? | 2010-04-09 | 2010-06-24 |  |  |  | 2009-03-11 | 2009-04-16 | 22d? | 0d |  |  | 905.48h |  | 23,943.06 |  |
| 14 | 1.2.1 | **1 - Tareas generales** |  | 11.94d | 2010-04-09 | 2010-04-26 |  |  |  | 2009-03-11 | 2009-03-26 | 11d | 0d |  |  | 80h |  | 2,081.82 |  |
| 15 | 1.2.1.1 | Extracción de Requerimientos CORE |  | 5d | 2010-04-09 | 2010-04-15 | 3 |  |  | 2009-03-11 | 2009-03-18 | 5d | 0d |  | Analista Funcional [50%] | 20h |  | 500 |  |
| 16 | 1.2.1.2 | Entrevistas |  | 10d | 2010-04-09 | 2010-04-23 | 3, 4 |  |  |  |  |  | 10.67d | 0d | Analista Funcional [50%] | 40h |  | 1,000 |  |
| 17 | 1.2.1.3 | Elaboración de lista de Requerimientos |  | 2.5d | 2010-04-13 | 2010-04-16 | 15SS+2d, 16SS+2d |  |  |  |  |  | 10.67d | 0d | Analista Funcional [50%] | 10h |  | 250 |  |
| 18 | 1.2.1.4 | Elaboración de Lista de Casos de Uso |  | 7.26d | 2010-04-15 | 2010-04-26 | 17SS+2d |  |  |  |  |  | 10.67d |  | Analista Funcional [50%]; Líder de Proyecto [10%] | 10h |  | 331.82 |  |
| 19 | 1.2.2 | **2 - Módulo Gestión de Acceso** |  | 6.4d | 2010-04-16 | 2010-04-26 |  |  |  |  |  |  | 0d |  |  | 32h |  | 800 |  |
| 20 | 1.2.2.1 | Listado de Casos de uso No CORE |  | 1d | 2010-04-16 | 2010-04-16 | 15 |  |  |  |  |  | 1d |  | Analista Funcional [50%] | 4h |  | 100 |  |
| 21 | 1.2.2.2 | Desarrollo de Casos de Uso CORE |  | 2d | 2010-04-16 | 2010-04-19 | 15 |  |  |  |  |  | 0d |  | Analista Funcional [50%] | 8h |  | 200 |  |
| 22 | 1.2.2.3 | Presentación de Casos de Uso |  | 1d | 2010-04-20 | 2010-04-20 | 21, 20 |  |  | 2009-03-25 | 2009-03-26 | 1d | 151.59d | 0d | Analista Funcional [50%] | 4h |  | 100 |  |
| 23 | 1.2.2.4 | Diseño Casos de uso CORE |  | 2.4d | 2010-04-21 | 2010-04-23 | 22 |  |  |  |  |  | 151.59d | 0d | Arquitecto; Desarrollador [50%] | 12h |  | 300 |  |
| 24 | 1.2.2.5 | Prueba de Documentación |  | 1d | 2010-04-23 | 2010-04-26 | 23 |  |  |  |  |  | 151.59d |  | Analista Funcional [50%] | 4h |  | 100 |  |

| ID | WBS | Task | Type | Duration | Start | Finish | Predecessors | Baseline start | Baseline finish | Baseline duration | Total slack | Free slack | Resources | Work | Cost |
| --- | --- | --- | --- | --- | --- | --- | --- | --- | --- | --- | --- | --- | --- | --- | --- |
| 25 | 1.2.3 | **3 - Móudlo Gestión de Comensales** |  | 11.71d | 2010-04-20 | 2010-05-05 |  | 2009-03-26 | 2009-04-16 | 11d? | 0d |  |  | 60h | 1,500 |
| 26 | 1.2.3.1 | Listado de Casos de uso No CORE |  | 2.5d | 2010-04-20 | 2010-04-22 | 20, 21 |  |  |  | 1.5d |  | Analista Funcional [50%] | 10h | 250 |
| 27 | 1.2.3.2 | Desarrollo de Casos de Uso CORE |  | 4d | 2010-04-20 | 2010-04-23 | 20, 21 |  |  |  | 0d |  | Analista Funcional [50%] | 16h | 400 |
| 28 | 1.2.3.3 | Presentación de Casos de Uso |  | 1d | 2010-04-26 | 2010-04-26 | 26, 27 | 2009-03-25 | 2009-03-26 | 1d | 144.28d | 0d | Analista Funcional [50%] | 4h | 100 |
| 29 | 1.2.3.4 | Diseño Casos de uso CORE |  | 4.71d | 2010-04-27 | 2010-05-03 | 28 |  |  |  | 144.28d | 0d | Arquitecto; Desarrollador [50%] | 22h | 550 |
| 30 | 1.2.3.5 | Prueba de Documentación |  | 2d | 2010-05-03 | 2010-05-05 | 29 |  |  |  | 144.28d |  | Analista Funcional [50%] | 8h | 200 |
| 31 | 1.2.4 | **4 - Móudlo Gestión de la Información** |  | 13.56d | 2010-04-26 | 2010-05-13 |  | 2009-03-26 | 2009-04-16 | 11d? | 0d |  |  | 67h | 1,675 |
| 32 | 1.2.4.1 | Listado de Casos de uso No CORE |  | 2.5d | 2010-04-26 | 2010-04-28 | 26, 27 |  |  |  | 1.5d |  | Analista Funcional [50%] | 10h | 250 |
| 33 | 1.2.4.2 | Desarrollo de Casos de Uso CORE |  | 4d | 2010-04-26 | 2010-04-29 | 26, 27 |  |  |  | 0d |  | Analista Funcional [50%] | 16h | 400 |
| 34 | 1.2.4.3 | Presentación de Casos de Uso |  | 2d | 2010-04-30 | 2010-05-03 | 32, 33 | 2009-03-25 | 2009-03-26 | 1d | 138.44d | 0d | Analista Funcional [50%] | 8h | 200 |
| 35 | 1.2.4.4 | Diseño Casos de uso CORE |  | 5.56d | 2010-05-04 | 2010-05-11 | 34 |  |  |  | 138.44d | 0d | Arquitecto; Desarrollador [50%] | 25h | 625 |
| 36 | 1.2.4.5 | Prueba de Documentación |  | 2d | 2010-05-11 | 2010-05-13 | 35 |  |  |  | 138.44d |  | Analista Funcional [50%] | 8h | 200 |
| 37 | 1.2.5 | **5 - Móudlo Gestión de Ponderaciones** |  | 10.29d | 2010-04-30 | 2010-05-14 |  | 2009-03-26 | 2009-04-16 | 11d? | 0d |  |  | 52h | 1,300 |
| 38 | 1.2.5.1 | Listado de Casos de uso No CORE |  | 3d | 2010-04-30 | 2010-05-04 | 32, 33 |  |  |  | 0d |  | Analista Funcional [50%] | 12h | 300 |
| 39 | 1.2.5.2 | Desarrollo de Casos de Uso CORE |  | 2d | 2010-04-30 | 2010-05-03 | 32, 33 |  |  |  | 1d |  | Analista Funcional [50%] | 8h | 200 |
| 40 | 1.2.5.3 | Presentación de Casos de Uso |  | 1d | 2010-05-05 | 2010-05-05 | 38, 39 | 2009-03-25 | 2009-03-26 | 1d | 28.52d | 0d | Analista Funcional [50%] | 4h | 100 |
| 41 | 1.2.5.4 | Diseño Casos de uso CORE |  | 4.29d | 2010-05-06 | 2010-05-12 | 40 |  |  |  | 28.52d | 0d | Arquitecto; Desarrollador [50%] | 20h | 500 |
| 42 | 1.2.5.5 | Prueba de Documentación |  | 2d | 2010-05-12 | 2010-05-14 | 41 |  |  |  | 28.52d | 0d | Analista Funcional [50%] | 8h | 200 |
| 43 | 1.2.6 | Casos de uso - entrega parcial (E2) | milestone | 0d | 2010-05-14 | 2010-05-14 | 42 |  |  |  | 28.52d |  | Líder de Proyecto; Analista Funcional |  |  |
| 44 | 1.2.7 | Documentación de diseño - entrega parcial (E3) | milestone | 0d | 2010-05-14 | 2010-05-14 | 42 |  |  |  | 28.52d |  | Arquitecto; Desarrollador; Líder de Proyecto |  |  |
| 45 | 1.2.8 | **6 - Móudlo Gestión de Reservas** |  | 22.46d | 2010-05-05 | 2010-06-04 |  | 2009-03-26 | 2009-04-16 | 11d? | 0d |  |  | 109h | 2,725 |
| 46 | 1.2.8.1 | Listado de Casos de uso No CORE |  | 4d | 2010-05-05 | 2010-05-10 | 38, 39 |  |  |  | 5d |  | Analista Funcional [50%] | 16h | 400 |
| 47 | 1.2.8.2 | Desarrollo de Casos de Uso CORE |  | 9d | 2010-05-05 | 2010-05-17 | 38, 39 |  |  |  | 0d |  | Analista Funcional [50%] | 36h | 900 |
| 48 | 1.2.8.3 | Presentación de Casos de Uso |  | 1d | 2010-05-18 | 2010-05-18 | 46, 47 | 2009-03-25 | 2009-03-26 | 1d | 122.53d | 0d | Analista Funcional [50%] | 4h | 100 |
| 49 | 1.2.8.4 | Diseño Casos de uso CORE |  | 9.46d | 2010-05-19 | 2010-06-01 | 48 |  |  |  | 122.53d | 0d | Arquitecto; Desarrollador [50%] | 41h | 1,025 |
| 50 | 1.2.8.5 | Prueba de Documentación |  | 3d | 2010-06-01 | 2010-06-04 | 49 |  |  |  | 122.53d |  | Analista Funcional [50%] | 12h | 300 |

| ID | WBS | Task | Type | Duration | Start | Finish | Predecessors | Baseline start | Baseline finish | Baseline duration | Total slack | Free slack | Resources | Work | Cost |
| --- | --- | --- | --- | --- | --- | --- | --- | --- | --- | --- | --- | --- | --- | --- | --- |
| 51 | 1.2.9 | **7 - Móudlo Gestión de Restaurantes** |  | 20.84d | 2010-05-18 | 2010-06-15 |  | 2009-03-26 | 2009-04-16 | 11d? | 0d |  |  | 107h | 2,675 |
| 52 | 1.2.9.1 | Listado de Casos de uso No CORE |  | 5d | 2010-05-18 | 2010-05-24 | 46, 47 |  |  |  | 2.5d |  | Analista Funcional [50%] | 20h | 500 |
| 53 | 1.2.9.2 | Desarrollo de Casos de Uso CORE |  | 7.5d | 2010-05-18 | 2010-05-27 | 46, 47 |  |  |  | 0d |  | Analista Funcional [50%] | 30h | 750 |
| 54 | 1.2.9.3 | Presentación de Casos de Uso |  | 1.25d | 2010-05-27 | 2010-05-28 | 52, 53 | 2009-03-25 | 2009-03-26 | 1d | 115.15d | 0d | Analista Funcional [50%] | 5h | 125 |
| 55 | 1.2.9.4 | Diseño Casos de uso CORE |  | 9.09d | 2010-05-28 | 2010-06-10 | 54 |  |  |  | 115.15d | 0d | Arquitecto; Desarrollador [50%] | 40h | 1,000 |
| 56 | 1.2.9.5 | Prueba de Documentación |  | 3d | 2010-06-10 | 2010-06-15 | 55 |  |  |  | 115.15d |  | Analista Funcional [50%] | 12h | 300 |
| 57 | 1.2.10 | **8 - Móudlo Gestión de Promociones** |  | 11.81d | 2010-05-27 | 2010-06-14 |  | 2009-03-26 | 2009-04-16 | 11d? | 0d |  |  | 66h | 1,649.99 |
| 58 | 1.2.10.1 | Listado de Casos de uso No CORE |  | 4d | 2010-05-27 | 2010-06-02 | 52, 53 |  |  |  | 0d |  | Analista Funcional [50%] | 16h | 400 |
| 59 | 1.2.10.2 | Desarrollo de Casos de Uso CORE |  | 4d | 2010-05-27 | 2010-06-02 | 52, 53 |  |  |  | 0d |  | Analista Funcional [50%] | 16h | 400 |
| 60 | 1.2.10.3 | Fin de Casos de Uso Funcionales | milestone | 0d | 2010-06-02 | 2010-06-02 | 59, 58 |  |  |  | 124.49d |  |  |  |  |
| 61 | 1.2.10.4 | Presentación de Casos de Uso |  | 1d | 2010-06-02 | 2010-06-03 | 58, 59 | 2009-03-25 | 2009-03-26 | 1d | 0d |  | Analista Funcional [50%] | 4h | 100 |
| 62 | 1.2.10.5 | Diseño Casos de uso CORE |  | 5.56d | 2010-06-03 | 2010-06-11 | 61 |  |  |  | 0d |  | Arquitecto; Desarrollador [50%] | 25h | 624.99 |
| 63 | 1.2.10.6 | Fin de Diseño de CUs Funcionales | milestone | 0d | 2010-06-11 | 2010-06-11 | 62 |  |  |  | 0d |  |  |  |  |
| 64 | 1.2.10.7 | Prueba de Documentación |  | 1.25d | 2010-06-11 | 2010-06-14 | 63 |  |  |  | 0d |  | Analista Funcional [50%] | 5h | 125 |
| 65 | 1.2.11 | Prueba General de Documentación |  | 7.5d? | 2010-06-14 | 2010-06-24 | 64 |  |  |  | 0d |  | Líder de Proyecto [50%]; Arquitecto [50%] | 60h | 1,950 |
| 66 | 1.2.12 | Entrega E.R.S. (E4) | milestone | 0d | 2010-06-24 | 2010-06-24 | 65, 43 |  |  |  | 0d |  | Líder de Proyecto; Analista Funcional |  |  |
| 67 | 1.2.13 | Entrega Casos de Uso (E5) | milestone | 0d | 2010-06-24 | 2010-06-24 | 65, 43 |  |  |  | 0d |  | Líder de Proyecto; Analista Funcional |  |  |
| 68 | 1.2.14 | Entrega Casos de Prueba (E6) | milestone | 0d | 2010-06-24 | 2010-06-24 | 65, 43 |  |  |  | 0d |  | Analista Funcional; Líder de Proyecto |  |  |
| 69 | 1.2.15 | Entrega Diagrama de Clases (E7) | milestone | 0d | 2010-06-24 | 2010-06-24 | 65, 44 |  |  |  | 0d |  | Arquitecto |  |  |
| 70 | 1.2.16 | Entrega Diagrama de Secuencia (E8) | milestone | 0d | 2010-06-24 | 2010-06-24 | 65, 44 |  |  |  | 0d |  | Arquitecto |  |  |
| 71 | 1.2.17 | **9 (Modelo de Seguridad)** |  | 31.19d | 2010-04-26 | 2010-06-09 | 14 |  |  |  | 10.67d | 9.81d |  | 105h | 2,732.14 |
| 72 | 1.2.17.1 | Incorporar a Casos de Uso Modelo de Seguridad |  | 3.33d | 2010-04-26 | 2010-04-30 |  |  |  |  | 10.67d | 0d | Analista Funcional [75%] | 20h | 500 |
| 73 | 1.2.17.2 | Diseñar Modelo de Seguridad |  | 10d | 2010-04-30 | 2010-05-14 | 72 |  |  |  | 10.67d | 0d | Arquitecto [25%]; Desarrollador [50%] | 60h | 1,500 |
| 74 | 1.2.17.3 | Prueba de Modelo de Seguridad |  | 17.86d | 2010-05-14 | 2010-06-09 | 72, 73 |  |  |  | 10.67d | 0d | Líder de Proyecto [5%]; Analista Funcional [25%] | 25h | 732.14 |
| 75 | 1.2.17.4 | Fin de Seguridad | milestone | 0d | 2010-06-09 | 2010-06-09 | 74 |  |  |  | 10.67d |  |  |  |  |

| ID | WBS | Task | Type | Duration | Start | Finish | Predecessors | Total slack | Free slack | Resources | Work | Cost |
| --- | --- | --- | --- | --- | --- | --- | --- | --- | --- | --- | --- | --- |
| 76 | 1.2.18 | **10 (Diseño de Pantallas)** |  | 41d | 2010-04-26 | 2010-06-23 | 14 | 110.05d | 0d |  | 167.48h | 4,854.11 |
| 77 | 1.2.18.1 | Selección de Pantallas principales |  | 30d | 2010-04-26 | 2010-06-07 |  | 1.86d | 1d | Analista Funcional [20%]; Líder de Proyecto [10%]; Arquitecto [5%] | 39.64h | 1,350.91 |
| 78 | 1.2.18.2 | Diseño general de presentación |  | 39d | 2010-04-26 | 2010-06-18 |  | 0.86d | 0d | Arquitecto [10%]; Desarrollador [20%]; Líder de Proyecto [5%] | 99.84h | 2,683.2 |
| 79 | 1.2.18.3 | Navegación de Pantallas |  | 10d | 2010-06-08 | 2010-06-23 | 77, 78FS-8d | 0.86d | 0d | Desarrollador [25%]; Líder de Proyecto [10%] | 28h | 820 |
| 80 | 1.2.18.4 | Entrega Documentación de Análisis y Diseño FINAL (E9) | milestone | 0d | 2010-06-23 | 2010-06-23 | 79 | 0.86d |  |  |  |  |
| 81 | 1.3 | Fin de Análisis y Diseño (Elaboración) | milestone | 0d | 2010-06-23 | 2010-06-23 | 14, 19, 25, 31, 37, 45, 51, 57, 71, 76 | 359.45d |  |  |  |  |
| 82 | 1.4 | **Construcción** |  | 78.56d? | 2010-06-24 | 2010-12-13 |  | 0d |  |  | 1531h | 38,275 |
| 83 | 1.4.1 | **1 - …** |  | 78.56d? | 2010-06-24 | 2010-12-13 |  | 0d |  |  | 1531h | 38,275 |
| 84 | 1.4.1.1 | Desarrollo |  | 76.56d | 2010-06-24 | 2010-12-06 | 65, 66, 67, 68, 69, 70, 71 | 0d |  | Desarrollador; Arquitecto | 1225h | 30,625 |
| 85 | 1.4.1.2 | Pruebas |  | 25.5d? | 2010-09-24 | 2010-12-13 | 84FF+2d | 0d |  | Tester; Analista Funcional [50%] | 306h | 7,650 |
| 86 | 1.5 | **Transición** |  | 30.62d? | 2010-12-13 | 2011-03-19 |  | 0d |  |  | 10h | 325 |
| 87 | 1.5.1 | **1 - Implementación y Soporte** |  | 30.62d? | 2010-12-13 | 2011-03-19 |  | 0d |  |  | 10h | 325 |
| 88 | 1.5.1.1 | Implementación |  | 0.62d? | 2010-12-13 | 2010-12-15 | 82 | 0d |  | Líder de Proyecto; Arquitecto | 10h | 325 |
| 89 | 1.5.1.2 | Finalización de Proyecto para Facultad | milestone | 0d | 2010-12-15 | 2010-12-15 | 88 | 0d |  |  |  |  |
| 90 | 1.5.1.3 | Soporte Técnico |  | 30d | 2010-12-15 | 2011-03-19 | 89 | 0d |  |  |  |  |
