# Plan de proyecto modelo2

Schedule from MS Project, 2010-04-07 to 2010-08-30, costs in $, A marks actual dates.
APG Consulting

## Calendars

- Estándar: Mon-Fri 19:00-21:00; Sat-Sun 14:00-18:00. Exceptions (off unless hours are given): 2010-04-05 to 2010-04-09 08:00-12:00, 13:00-17:00, 2010-04-10 to 2010-04-11, 2010-04-12 to 2010-04-16 08:00-12:00, 13:00-17:00, 2010-04-17 to 2010-04-18, 2010-04-19 to 2010-04-23 08:00-12:00, 13:00-17:00, 2010-04-24 to 2010-04-25, 2010-04-26 to 2010-04-30 08:00-12:00, 13:00-17:00, 2010-05-01 to 2010-05-02, 2010-05-03 to 2010-05-07 08:00-12:00, 13:00-17:00, 2010-05-08 to 2010-05-09, 2010-05-10 to 2010-05-14 08:00-12:00, 13:00-17:00, 2010-05-15 to 2010-05-16, 2010-05-17 to 2010-05-21 08:00-12:00, 13:00-17:00, 2010-05-22 to 2010-05-23, 2010-05-24 to 2010-05-28 08:00-12:00, 13:00-17:00, 2010-05-29 to 2010-05-30, 2010-05-31 to 2010-06-04 08:00-12:00, 13:00-17:00, 2010-06-05 to 2010-06-06, 2010-06-07 to 2010-06-11 08:00-12:00, 13:00-17:00, 2010-06-12 to 2010-06-13, 2010-06-14 to 2010-06-18 08:00-12:00, 13:00-17:00, 2010-06-19 to 2010-06-21, 2010-06-22 to 2010-06-25 08:00-12:00, 13:00-17:00, 2010-06-26 to 2010-06-27, 2010-06-28 to 2010-07-02 08:00-12:00, 13:00-17:00, 2010-07-03 to 2010-07-04, 2010-07-05 to 2010-07-08 08:00-12:00, 13:00-17:00, 2010-07-09 to 2010-07-11, 2010-07-12 to 2010-07-16 08:00-12:00, 13:00-17:00, 2010-07-17 to 2010-07-18, 2010-07-19 to 2010-07-23 08:00-12:00, 13:00-17:00, 2010-07-24 to 2010-07-25, 2010-07-26 to 2010-07-30 08:00-12:00, 13:00-17:00, 2010-07-31 to 2010-08-01, 2010-08-02 to 2010-08-06 08:00-12:00, 13:00-17:00, 2010-08-07 to 2010-08-08, 2010-08-09 to 2010-08-13 08:00-12:00, 13:00-17:00, 2010-08-14 to 2010-08-16, 2010-08-17 to 2010-08-20 08:00-12:00, 13:00-17:00, 2010-08-21 to 2010-08-22, 2010-08-23 to 2010-08-27 08:00-12:00, 13:00-17:00, 2010-08-28 to 2010-08-29, 2010-08-30 to 2010-08-31 08:00-12:00, 13:00-17:00.

## Resources

| Resource | Rate |
| --- | --- |
| Líder de Proyecto | 40 |
| Analista Funcional | 25 |
| Arquitecto | 25 |
| Desarrollador | 25 |
| Tester | 25 |
| Soporte | 25 |

## Schedule

| ID | WBS | Task | Type | Duration | Start | Finish | Predecessors | Complete | Remaining | Baseline start | Baseline finish | Baseline duration | Total slack | Free slack | Resources | Work | Actual work | Cost | Actual cost |
| --- | --- | --- | --- | --- | --- | --- | --- | --- | --- | --- | --- | --- | --- | --- | --- | --- | --- | --- | --- |
| 1 | 1 | **Proyecto Nuevo** |  | 100d? | 2010-04-07 A | 2010-08-30 |  | 25% | 75.25d? | 2009-02-25 | 2009-04-16 | 32d? | 0d |  |  | 717.28h | 201h | 19,348.58 | 5,654.25 |
| 2 | 1.1 | **Inicio / Visión** |  | 15d? | 2010-04-07 A | 2010-04-28 A |  | 100% |  | 2009-02-25 | 2009-03-11 | 10d? |  |  |  | 114.8h | 114.8h | 3,499.25 | 3,499.25 |
| 3 | 1.1.1 | Generación de Brief de Proyecto |  | 1.88d | 2010-04-07 A | 2010-04-08 A |  | 100% |  | 2009-02-25 | 2009-02-26 | 1d? |  |  | Analista Funcional [50%]; Líder de Proyecto [10%] | 9h | 9h | 247.5 | 247.5 |
| 4 | 1.1.2 | Definición de Roles y Recursos |  | 2.5d | 2010-04-07 A | 2010-04-09 A |  | 100% |  | 2009-02-26 | 2009-03-05 | 5d |  |  | Analista Funcional [20%] | 4h | 4h | 100 | 100 |
| 5 | 1.1.3 | Definición de Tecnología a utilizar |  | 2d | 2010-04-09 A | 2010-04-12 A | 3 | 100% |  | 2009-02-26 | 2009-03-05 | 5d |  |  | Arquitecto [50%] | 8h | 8h | 200 | 200 |
| 6 | 1.1.4 | Definición de Plan de Proyecto |  | 2d | 2010-04-09 A | 2010-04-12 A | 3 | 100% |  |  |  |  |  |  | Líder de Proyecto [50%] | 8h | 8h | 320 | 320 |
| 7 | 1.1.5 | Definición de Plan de Calidad |  | 2d? | 2010-04-09 A | 2010-04-13 A | 4 | 100% |  |  |  |  |  |  | Analista Funcional [50%] | 8h | 8h | 200 | 200 |
| 8 | 1.1.6 | Definición de Plan de Comunicación |  | 2d | 2010-04-09 A | 2010-04-13 A | 4 | 100% |  |  |  |  |  |  | Arquitecto [50%] | 8h | 8h | 200 | 200 |
| 9 | 1.1.7 | Definición de CM |  | 2d | 2010-04-13 A | 2010-04-14 A | 5 | 100% |  |  |  |  |  |  | Desarrollador [50%] | 8h | 8h | 200 | 200 |
| 10 | 1.1.8 | Estimación de Esfuerzo |  | 10.56d | 2010-04-13 A | 2010-04-27 A | 3, 4 | 100% |  | 2009-03-05 | 2009-03-10 | 3d |  |  | Líder de Proyecto [10%]; Desarrollador [50%] | 37.8h | 37.8h | 1,071.75 | 1,071.75 |
| 11 | 1.1.9 | Armado de Cronograma |  | 10d | 2010-04-14 A | 2010-04-28 A | 10SS+1d | 100% |  |  |  |  |  |  | Líder de Proyecto [30%] | 24h | 24h | 960 | 960 |
| 12 | 1.1.10 | Presentación de Documentación de Proyecto(E1) | milestone | 0d | 2010-04-28 A | 2010-04-28 A | 3, 4, 5, 10, 11, 6, 8, 9 | 100% |  | 2009-03-10 | 2009-03-11 | 1d |  |  | Líder de Proyecto; Arquitecto |  |  |  |  |
| 13 | 1.2 | **Elaboración** |  | 49.5d? | 2010-04-20 A | 2010-06-30 |  | 19% | 40.16d? | 2009-03-11 | 2009-04-16 | 22d? | 0d |  |  | 435h | 86.2h | 10,995 | 2,155 |
| 14 | 1.2.1 | **1 - Módulo Gestión de Acceso** |  | 5.4d | 2010-04-20 A | 2010-04-28 |  | 54% | 2.48d |  |  |  | 44.1d |  |  | 32h | 16h | 800 | 400 |
| 15 | 1.2.1.1 | Listado de Casos de uso No CORE |  | 1d | 2010-04-20 A | 2010-04-21 A | 8FS+5d | 100% |  |  |  |  |  |  | Analista Funcional [50%] | 4h | 4h | 100 | 100 |
| 16 | 1.2.1.2 | Desarrollo de Casos de Uso CORE |  | 2d | 2010-04-20 A | 2010-04-22 A | 8FS+5d | 100% |  |  |  |  |  |  | Analista Funcional [50%] | 8h | 8h | 200 | 200 |
| 17 | 1.2.1.3 | Presentación de Casos de Uso |  | 1d | 2010-04-22 A | 2010-04-23 A | 16, 15 | 100% |  | 2009-03-25 | 2009-03-26 | 1d |  |  | Analista Funcional [50%] | 4h | 4h | 100 | 100 |
| 18 | 1.2.1.4 | Diseño Casos de uso CORE |  | 2.4d | 2010-04-23 | 2010-04-28 | 17 |  |  |  |  |  | 44.1d |  | Arquitecto; Desarrollador [50%] | 12h |  | 300 |  |
| 19 | 1.2.1.5 | Prueba de Documentación |  | 1d | 2010-04-23 | 2010-04-26 | 17 |  |  |  |  |  | 45.5d |  | Analista Funcional [50%] | 4h |  | 100 |  |
| 20 | 1.2.2 | **2 - Móudlo Gestión de Comensales** |  | 11.71d | 2010-04-22 A | 2010-05-10 |  | 49% | 5.95d | 2009-03-26 | 2009-04-16 | 11d? | 35.79d |  |  | 60h | 28h | 1,500 | 700 |
| 21 | 1.2.2.1 | Listado de Casos de uso No CORE |  | 2.5d | 2010-04-22 A | 2010-04-27 A | 15, 16 | 100% |  |  |  |  |  |  | Analista Funcional [50%] | 10h | 10h | 250 | 250 |
| 22 | 1.2.2.2 | Desarrollo de Casos de Uso CORE |  | 4d | 2010-04-22 A | 2010-04-28 A | 15, 16 | 100% |  |  |  |  |  |  | Analista Funcional [50%] | 16h | 16h | 400 | 400 |
| 23 | 1.2.2.3 | Presentación de Casos de Uso |  | 1d | 2010-04-28 A | 2010-04-29 | 21, 22 | 50% | 0.5d | 2009-03-25 | 2009-03-26 | 1d | 35.79d | 0d | Analista Funcional [50%] | 4h | 2h | 100 | 50 |
| 24 | 1.2.2.4 | Diseño Casos de uso CORE |  | 4.71d | 2010-04-29 | 2010-05-06 | 23 |  |  |  |  |  | 35.79d | 0d | Arquitecto; Desarrollador [50%] | 22h |  | 550 |  |
| 25 | 1.2.2.5 | Prueba de Documentación |  | 2d | 2010-05-06 | 2010-05-10 | 24 |  |  |  |  |  | 35.79d |  | Analista Funcional [50%] | 8h |  | 200 |  |

| ID | WBS | Task | Type | Duration | Start | Finish | Predecessors | Complete | Remaining | Baseline start | Baseline finish | Baseline duration | Total slack | Free slack | Resources | Work | Actual work | Cost | Actual cost |
| --- | --- | --- | --- | --- | --- | --- | --- | --- | --- | --- | --- | --- | --- | --- | --- | --- | --- | --- | --- |
| 26 | 1.2.3 | **3 - Móudlo Gestión de la Información** |  | 11.56d | 2010-04-28 A | 2010-05-14 |  | 8% | 10.66d | 2009-03-26 | 2009-04-16 | 11d? | 31.94d |  |  | 67h | 5h | 1,675 | 125 |
| 27 | 1.2.3.1 | Listado de Casos de uso No CORE |  | 2.5d | 2010-04-28 A | 2010-05-03 | 21, 22 | 50% | 1.25d |  |  |  | 3.6d | 1.5d | Analista Funcional [50%] | 10h | 5h | 250 | 125 |
| 28 | 1.2.3.2 | Desarrollo de Casos de Uso CORE |  | 4d | 2010-04-28 | 2010-05-04 | 21, 22 |  |  |  |  |  | 2.1d | 0d | Analista Funcional [50%] | 16h |  | 400 |  |
| 29 | 1.2.3.3 | Presentación de Casos de Uso |  | 2d | 2010-05-04 | 2010-05-06 | 27, 28 |  |  | 2009-03-25 | 2009-03-26 | 1d | 31.94d | 0d | Analista Funcional [50%] | 8h |  | 200 |  |
| 30 | 1.2.3.4 | Diseño Casos de uso CORE |  | 5.56d | 2010-05-06 | 2010-05-14 | 29 |  |  |  |  |  | 31.94d |  | Arquitecto; Desarrollador [50%] | 25h |  | 625 |  |
| 31 | 1.2.3.5 | Prueba de Documentación |  | 2d | 2010-05-04 | 2010-05-06 | 27, 28 |  |  |  |  |  | 2.1d | 0d | Analista Funcional [50%] | 8h |  | 200 |  |
| 32 | 1.2.4 | Evolución de Proyecto: Primer entrega | milestone | 0d? | 2010-05-14 A | 2010-05-14 A | 26 | 100% |  |  |  |  |  |  | Líder de Proyecto |  |  |  |  |
| 33 | 1.2.5 | Casos de uso: Primer entrega (E2) | milestone | 0d | 2010-05-14 A | 2010-05-14 A | 26 | 100% |  |  |  |  |  |  | Líder de Proyecto; Analista Funcional |  |  |  |  |
| 34 | 1.2.6 | Diagrama de Clases: Primer entrega(E3) | milestone | 0d | 2010-05-14 A | 2010-05-14 A | 26 | 100% |  |  |  |  |  |  | Arquitecto; Desarrollador; Líder de Proyecto |  |  |  |  |
| 35 | 1.2.7 | Diagrama de Secuencia: Primer entrega (E4) | milestone | 0d | 2010-05-14 A | 2010-05-14 A | 26 | 100% |  |  |  |  |  |  | Arquitecto [50%]; Desarrollador; Líder de Proyecto [50%] |  |  |  |  |
| 36 | 1.2.8 | **4 - Móudlo Gestión de Ponderaciones** |  | 11d | 2010-05-06 A | 2010-05-21 |  | 2% | 10.77d | 2009-03-26 | 2009-04-16 | 11d? | 26.5d |  |  | 52h | 1.2h | 1,300 | 30 |
| 37 | 1.2.8.1 | Listado de Casos de uso No CORE |  | 3d | 2010-05-06 A | 2010-05-11 | 27, 28, 31 | 10% | 2.7d |  |  |  | 1.8d | 0d | Analista Funcional [50%] | 12h | 1.2h | 300 | 30 |
| 38 | 1.2.8.2 | Desarrollo de Casos de Uso CORE |  | 2d | 2010-05-11 | 2010-05-13 | 27, 28, 37 |  |  |  |  |  | 1.8d | 0d | Analista Funcional [50%] | 8h |  | 200 |  |
| 39 | 1.2.8.3 | Presentación de Casos de Uso |  | 1d | 2010-05-13 | 2010-05-14 | 37, 38 |  |  | 2009-03-25 | 2009-03-26 | 1d | 26.5d | 0d | Analista Funcional [50%] | 4h |  | 100 |  |
| 40 | 1.2.8.4 | Diseño Casos de uso CORE |  | 4.29d | 2010-05-14 | 2010-05-20 | 39 |  |  |  |  |  | 27.21d |  | Arquitecto; Desarrollador [50%] | 20h |  | 500 |  |
| 41 | 1.2.8.5 | Prueba de Documentación |  | 4d | 2010-05-17 | 2010-05-21 | 39FS+1d |  |  |  |  |  | 26.5d |  | Analista Funcional [25%] | 8h |  | 200 |  |
| 42 | 1.2.9 | **5 - Móudlo Gestión de Reservas** |  | 22.46d | 2010-05-13 A | 2010-06-15 |  | 19% | 18.22d | 2009-03-26 | 2009-04-16 | 11d? | 10.04d |  |  | 109h | 20h | 2,725 | 500 |
| 43 | 1.2.9.1 | Listado de Casos de uso No CORE |  | 4d | 2010-05-13 A | 2010-05-19 | 37, 38 | 80% | 0.8d |  |  |  | 5d |  | Analista Funcional [50%] | 16h | 12.8h | 400 | 320 |
| 44 | 1.2.9.2 | Desarrollo de Casos de Uso CORE |  | 9d | 2010-05-13 A | 2010-05-26 | 37, 38 | 20% | 7.2d |  |  |  | 0d |  | Analista Funcional [50%] | 36h | 7.2h | 900 | 180 |
| 45 | 1.2.9.3 | Presentación de Casos de Uso |  | 1d | 2010-05-26 | 2010-05-27 | 43, 44 |  |  | 2009-03-25 | 2009-03-26 | 1d | 10.04d | 0d | Analista Funcional [50%] | 4h |  | 100 |  |
| 46 | 1.2.9.4 | Diseño Casos de uso CORE |  | 9.46d | 2010-05-27 | 2010-06-10 | 45 |  |  |  |  |  | 10.04d | 0d | Arquitecto; Desarrollador [50%] | 41h |  | 1,025 |  |
| 47 | 1.2.9.5 | Prueba de Documentación |  | 3d | 2010-06-10 | 2010-06-15 | 46 |  |  |  |  |  | 10.04d |  | Analista Funcional [50%] | 12h |  | 300 |  |
| 48 | 1.2.10 | **6 - Móudlo Gestión de Restaurantes** |  | 20.84d | 2010-05-27 A | 2010-06-28 |  | 15% | 17.61d | 2009-03-26 | 2009-04-16 | 11d? | 1.66d |  |  | 107h | 16h | 2,675 | 400 |
| 49 | 1.2.10.1 | Listado de Casos de uso No CORE |  | 5d | 2010-05-27 A | 2010-06-03 | 43FS+1d, 44FS+1d | 80% | 1d |  |  |  | 2.5d |  | Analista Funcional [50%] | 20h | 16h | 500 | 400 |
| 50 | 1.2.10.2 | Desarrollo de Casos de Uso CORE |  | 7.5d | 2010-05-27 | 2010-06-08 | 43FS+1d, 44FS+1d |  |  |  |  |  | 0d |  | Analista Funcional [50%] | 30h |  | 750 |  |
| 51 | 1.2.10.3 | Fin de Casos de Uso Funcionales | milestone | 0d | 2010-06-08 | 2010-06-08 | 50, 49 |  |  |  |  |  | 1.66d | 0d |  |  |  |  |  |
| 52 | 1.2.10.4 | Presentación de Casos de Uso |  | 1.25d | 2010-06-08 | 2010-06-09 | 49, 51 |  |  | 2009-03-25 | 2009-03-26 | 1d | 1.66d | 0d | Analista Funcional [50%] | 5h |  | 125 |  |
| 53 | 1.2.10.5 | Diseño Casos de uso CORE |  | 9.09d | 2010-06-09 | 2010-06-23 | 52 |  |  |  |  |  | 1.66d | 0d | Arquitecto; Desarrollador [50%] | 40h |  | 1,000 |  |
| 54 | 1.2.10.6 | Fin de Diseño de CUs Funcionales | milestone | 0d | 2010-06-23 | 2010-06-23 | 53 |  |  |  |  |  | 1.66d | 0d |  |  |  |  |  |
| 55 | 1.2.10.7 | Prueba de Documentación |  | 3d | 2010-06-23 | 2010-06-28 | 54 |  |  |  |  |  | 1.66d |  | Analista Funcional [50%] | 12h |  | 300 |  |
| 56 | 1.2.11 | Evolución de Proyecto: Segunda entrega | milestone | 0d | 2010-06-04 A | 2010-06-04 | 33FS+15d, 34FS+15d | 50% | 0d |  |  |  | 16.94d |  | Líder de Proyecto |  |  |  |  |
| 57 | 1.2.12 | Entrega E.R.S. (E5) | milestone | 0d | 2010-06-04 A | 2010-06-04 | 33FS+15d, 34FS+15d | 80% | 0d |  |  |  | 16.94d |  | Líder de Proyecto [50%]; Analista Funcional [50%] |  |  |  |  |
| 58 | 1.2.13 | Prueba General de Documentación |  | 10d | 2010-06-15 | 2010-06-30 | 15FS+5d, 16FS+5d, 21FS+5d, 22FS+5d, 27FS+5d, 28FS+5d, 37FS+5d, 38FS+5d, 43FS+5d, 44FS+5d, 49FS+5d, 50FS+5d |  |  |  |  |  | 0d |  | Líder de Proyecto [10%] | 8h |  | 320 |  |
| 59 | 1.2.14 | Evolución de Proyecto: Tercer entrega | milestone | 0d | 2010-06-30 | 2010-06-30 | 58 |  |  |  |  |  | 0d |  | Líder de Proyecto |  |  |  |  |
| 60 | 1.2.15 | Entrega Casos de Uso (E6) | milestone | 0d | 2010-06-30 | 2010-06-30 | 59, 33 |  |  |  |  |  | 0d |  | Líder de Proyecto [50%]; Analista Funcional [50%] |  |  |  |  |
| 61 | 1.2.16 | Entrega Casos de Prueba (E7) | milestone | 0d | 2010-06-30 | 2010-06-30 | 58, 33 |  |  |  |  |  | 0d |  | Analista Funcional; Líder de Proyecto [50%] |  |  |  |  |
| 62 | 1.2.17 | Entrega Diagrama de Clases (E8) | milestone | 0d | 2010-06-30 | 2010-06-30 | 58, 33 |  |  |  |  |  | 0d |  | Arquitecto |  |  |  |  |
| 63 | 1.2.18 | Entrega Diagrama de Secuencia (E9) | milestone | 0d | 2010-06-30 | 2010-06-30 | 58, 33 |  |  |  |  |  | 0d |  | Arquitecto |  |  |  |  |
| 64 | 1.3 | Fin de Análisis y Diseño (Elaboración) | milestone | 0d | 2010-06-23 | 2010-06-23 | 51, 54 |  |  |  |  |  | 45.66d |  |  |  |  |  |  |

| ID | WBS | Task | Type | Duration | Start | Finish | Predecessors | Total slack | Resources | Work | Cost |
| --- | --- | --- | --- | --- | --- | --- | --- | --- | --- | --- | --- |
| 65 | 1.4 | **Construcción** |  | 41d | 2010-06-30 | 2010-08-30 | 13 | 0d |  | 167.48h | 4,854.33 |
| 66 | 1.4.1 | **10 (Diseño de Pantallas)** |  | 41d | 2010-06-30 | 2010-08-30 | 13 | 0d |  | 167.48h | 4,854.33 |
| 67 | 1.4.1.1 | Selección de Pantallas principales |  | 30d | 2010-06-30 | 2010-08-12 |  | 1d | Analista Funcional [20%]; Líder de Proyecto [10%]; Arquitecto [5%] | 39.63h | 1,350.83 |
| 68 | 1.4.1.2 | Diseño general de presentación |  | 39d | 2010-06-30 | 2010-08-26 |  | 0d | Arquitecto [10%]; Desarrollador [20%]; Líder de Proyecto [5%] | 99.85h | 2,683.5 |
| 69 | 1.4.1.3 | Navegación de Pantallas |  | 10d | 2010-08-13 | 2010-08-30 | 67, 68FS-8d | 0d | Desarrollador [25%]; Líder de Proyecto [10%] | 28h | 820 |
| 70 | 1.4.1.4 | Entrega Documentación de Análisis y Diseño FINAL (E9) | milestone | 0d | 2010-08-30 | 2010-08-30 | 69 | 0d |  |  |  |
| 71 | 1.4.2 | **1 - …** |  | 0d | 2010-06-30 | 2010-06-30 |  | 41d |  |  |  |
| 72 | 1.4.2.1 | Desarrollo | milestone | 0d | 2010-06-30 | 2010-06-30 |  | 41d |  |  |  |
| 73 | 1.4.2.2 | Pruebas | milestone | 0d | 2010-06-30 | 2010-06-30 |  | 41d |  |  |  |
| 74 | 1.5 | **Transición** |  | 0d | 2010-06-30 | 2010-06-30 | 13 | 41d |  |  |  |
| 75 | 1.5.1 | **1 - Implementación y Soporte** |  | 0d | 2010-06-30 | 2010-06-30 |  | 41d |  |  |  |
| 76 | 1.5.1.1 | Implementación | milestone | 0d | 2010-06-30 | 2010-06-30 |  | 41d |  |  |  |
| 77 | 1.5.1.2 | Finalización de Proyecto para Facultad | milestone | 0d | 2010-06-30 | 2010-06-30 |  | 41d |  |  |  |
| 78 | 1.5.1.3 | Soporte Técnico | milestone | 0d | 2010-06-30 | 2010-06-30 |  | 41d |  |  |  |
